# GP-ProjetQCM

How a schedule from MS Project changed from version to version. A marks actual dates.

## Version 1 (saved 2015-12-01)

Note of the change: First commit to initiate remote repository - Consult README to find a specific documentation

| ID | WBS | Task | Duration | Start | Finish | Predecessors | Complete | Total float | Constraint |
| --- | --- | --- | --- | --- | --- | --- | --- | --- | --- |
| 1 |  | Expression des besoins et exigences comportementales | 2d | 2015-10-07 A | 2015-10-08 A |  | 100% |  |  |
| 2 | 2 | **Conception** | 68d | 2015-10-09 | 2015-12-15 | 1 |  | 30d |  |
| 3 | 2.1 | **Rédaction des spécifications générales** | 30d | 2015-10-09 | 2015-11-14 | 1 |  | 33.5d |  |
| 4 |  | Rédaction et mise en forme du document | 2d | 2015-11-13 | 2015-11-14 | 12 |  | 33.5d |  |
| 5 |  | Analyse du besoin fonctionnel | 5d | 2015-10-09 | 2015-10-13 | 1 |  | 33.5d |  |
| 6 |  | Conception des maquettes | 2d | 2015-10-14 | 2015-10-17 | 5 |  | 33.5d |  |
| 7 |  | Conception des UserCase | 3d | 2015-10-17 | 2015-10-19 | 6 |  | 33.5d |  |
| 8 |  | Liste et Analyse des fonctions | 5d | 2015-10-20 | 2015-10-25 | 7 |  | 33.5d |  |
| 9 |  | Planification prévisionnelle | 5d | 2015-11-05 | 2015-11-10 | 10, 11 |  | 33.5d |  |
| 10 |  | Mise en place Gantt / PERT | 5d | 2015-10-26 | 2015-11-01 | 8 |  | 33.5d |  |
| 11 |  | Liste des ressources | 2d | 2015-11-01 | 2015-11-04 | 10 |  | 33.5d |  |
| 12 |  | Coût prévisionnel | 1d | 2015-11-11 | 2015-11-12 | 9 |  | 33.5d |  |
| 13 |  | Validation du besoin client | 0d | 2015-11-15 | 2015-11-15 | 3 |  |  |  |
| 14 | 2.3 | **Rédaction des spécifications détaillées** | 38d | 2015-11-15 | 2015-12-15 | 3 |  | 33.5d |  |
| 15 |  | Rédaction et mise en forme du document | 5d | 2015-12-10 | 2015-12-15 | 21 |  | 33.5d |  |
| 16 |  | Analyse technique par fonction | 13d | 2015-11-21 | 2015-11-30 | 17 |  | 33.5d |  |
| 17 |  | Conception du diagramme de classe | 10d | 2015-11-15 | 2015-11-21 | 3 |  | 33.5d |  |
| 18 |  | Schéma détaillé de la base de données | 5d | 2015-11-21 | 2015-11-25 | 17 |  | 56.5d |  |
| 19 |  | Planification et rédaction des tests | 6d | 2015-11-30 | 2015-12-05 | 16 |  | 33.5d |  |
| 20 |  | Mise en place des règles de nommage | 1d | 2015-12-05 | 2015-12-05 | 19 |  | 41.5d |  |
| 21 |  | Conception du diagramme de composants | 4d | 2015-12-05 | 2015-12-09 | 19 |  | 33.5d |  |
| 22 | 3 | **Développement** | 158d | 2015-12-16 | 2016-05-28 | 14 |  | 33.5d |  |
| 23 |  | Mise en place de l'environnement de développement | 4d | 2015-12-16 | 2015-12-20 | 15 |  | 33.5d |  |
| 24 |  | Conception de la base de données | 4d | 2015-12-20 | 2015-12-27 | 23 |  | 33.5d |  |
| 25 |  | Développement du Web Service | 30d | 2015-12-27 | 2016-01-26 | 24 |  | 33.5d |  |
| 26 |  | Développement du Backend | 30d | 2016-01-26 | 2016-02-28 | 25 |  | 33.5d |  |
| 27 |  | Développement Android | 30d | 2016-02-28 | 2016-03-26 | 26 |  | 33.5d |  |
| 28 |  | Développement IOS | 30d | 2016-03-26 | 2016-05-01 | 27 |  | 33.5d |  |
| 29 |  | Développement Windows Phone | 30d | 2016-05-02 | 2016-05-28 | 28 |  | 33.5d |  |
| 30 | 4 | **Test et validation** | 34d | 2016-05-28 | 2016-07-01 | 22 |  | 33.5d |  |
| 31 |  | Mise en place de l'environnement de test | 4d | 2016-05-28 | 2016-06-02 | 29 |  | 33.5d |  |
| 32 |  | Test des fonctions applicatives | 10d | 2016-06-03 | 2016-06-14 | 31 |  | 33.5d |  |
| 33 |  | Test du Backend | 10d | 2016-06-15 | 2016-06-26 | 32 |  | 33.5d |  |
| 34 |  | Test du Web service | 10d | 2016-06-27 | 2016-07-01 | 33 |  | 33.5d |  |
| 35 |  | Validation des tests | 0d | 2016-07-02 | 2016-07-02 | 30 |  |  |  |
| 36 |  | Demande de déploiement dans les stores | 0d | 2016-07-02 | 2016-07-02 | 35 |  |  |  |
| 37 | 7 | **Déploiement** | 11d | 2016-07-02 | 2016-07-08 | 30 |  | 33.5d |  |
| 38 |  | Mise en place de l'environnement de production | 4d | 2016-07-02 | 2016-07-04 |  |  | 33.5d |  |
| 39 |  | Intégration des applications dans l'environnement de production | 3d | 2016-07-05 | 2016-07-07 | 38 |  | 33.5d |  |
| 40 |  | Déploiement de la solution finale | 3d | 2016-07-07 | 2016-07-07 | 39 |  | 33.5d |  |
| 41 |  | Mise à disposition de l'application dans les stores | 1d | 2016-07-08 | 2016-07-08 | 40 |  | 33.5d |  |
| 42 | 8 | **Plan de Management Projet** | 306.5d | 2015-10-07 | 2016-08-07 |  |  | 0d |  |
| 43 |  | Plan de Management Projet 1 | 0.3d | 2015-11-22 | 2015-11-22 |  |  |  | start no earlier than 2015-11-22 |
| 44 |  | Plan de Management Projet 2 | 0.3d | 2015-11-29 | 2015-11-29 |  |  |  | start no earlier than 2015-11-29 |
| 45 |  | Plan de Management Projet 3 | 0.3d | 2015-12-06 | 2015-12-06 |  |  |  | start no earlier than 2015-12-06 |
| 46 |  | Plan de Management Projet 4 | 0.3d | 2015-12-13 | 2015-12-13 |  |  |  | start no earlier than 2015-12-13 |
| 47 |  | Plan de Management Projet 5 | 0.3d | 2015-12-20 | 2015-12-20 |  |  |  | start no earlier than 2015-12-20 |
| 48 |  | Plan de Management Projet 6 | 0.3d | 2015-12-27 | 2015-12-27 |  |  |  | start no earlier than 2015-12-27 |
| 49 |  | Plan de Management Projet 7 | 0.3d | 2016-01-03 | 2016-01-03 |  |  |  | start no earlier than 2016-01-03 |
| 50 |  | Plan de Management Projet 8 | 0.3d | 2016-01-10 | 2016-01-10 |  |  |  | start no earlier than 2016-01-10 |
| 51 |  | Plan de Management Projet 9 | 0.3d | 2016-01-17 | 2016-01-17 |  |  |  | start no earlier than 2016-01-17 |
| 52 |  | Plan de Management Projet 10 | 0.3d | 2016-01-24 | 2016-01-24 |  |  |  | start no earlier than 2016-01-24 |
| 53 |  | Plan de Management Projet 11 | 0.3d | 2016-01-31 | 2016-01-31 |  |  |  | start no earlier than 2016-01-31 |
| 54 |  | Demande de déploiement dans les stores | 0d | 2015-10-07 | 2015-10-07 |  |  | 306.5d |  |
| 55 |  | Audit projet - Gestion de projet | 0d | 2016-01-28 | 2016-01-28 |  |  |  |  |
| 56 |  | Audit Projet - Programmation | 0d | 2016-05-12 | 2016-05-12 |  |  |  |  |
| 57 |  | Audit - Programmation | 0d | 2016-05-19 | 2016-05-19 |  |  |  |  |
| 58 |  | Livraison Projet | 0d | 2016-08-07 | 2016-08-07 |  |  |  |  |

## Version 2 (saved 2016-01-18)

Note of the change: Update documentation after audit 0118

Last finish stays 2016-08-07. Complete tasks 1 → 10.

Changed:

| ID | Task | Start | Finish | Complete | Total float |
| --- | --- | --- | --- | --- | --- |
| 2 | **Conception** | 2015-10-09 A |  | 0% → 43% | 30d → 33.5d |
| 3 | **Rédaction des spécifications générales** | 2015-10-09 A | 2015-11-14 A | 0% → 100% | 33.5d → none |
| 4 | Rédaction et mise en forme du document | 2015-11-13 A | 2015-11-14 A | 0% → 100% | 33.5d → none |
| 5 | Analyse du besoin fonctionnel | 2015-10-09 A | 2015-10-13 A | 0% → 100% | 33.5d → none |
| 6 | Conception des maquettes | 2015-10-14 A | 2015-10-17 A | 0% → 100% | 33.5d → none |
| 7 | Conception des UserCase | 2015-10-17 A | 2015-10-19 A | 0% → 100% | 33.5d → none |
| 8 | Liste et Analyse des fonctions | 2015-10-20 A | 2015-10-25 A | 0% → 100% | 33.5d → none |
| 9 | Planification prévisionnelle | 2015-11-05 A | 2015-11-10 A | 0% → 100% | 33.5d → none |
| 10 | Mise en place Gantt / PERT | 2015-10-26 A | 2015-11-01 A | 0% → 100% | 33.5d → none |
| 11 | Liste des ressources | 2015-11-01 A | 2015-11-04 A | 0% → 100% | 33.5d → none |
| 12 | Coût prévisionnel | 2015-11-11 A | 2015-11-12 A | 0% → 100% | 33.5d → none |
| 14 | **Rédaction des spécifications détaillées** | 2015-11-15 A |  | 0% → 3% |  |
| 19 | Planification et rédaction des tests | 2015-11-30 A |  | 0% → 25% |  |

## Version 3 (data date 2016-01-27, saved 2016-01-27)

Note of the change: Create MyQCm project's progress state 2016/01/27 Modification CDCF and CDC Update PMP

Last finish stays 2016-08-07. Complete tasks 10 → 25.

Added:

| ID | Task | Duration | Start | Finish | Predecessors |
| --- | --- | --- | --- | --- | --- |
| 22 | Validation du cahier des charges spécifiques | 0d | 2015-12-02 | 2015-12-02 |  |
| 26 | Validation du schema de base de données | 0d | 2015-12-28 | 2015-12-28 |  |
| 29 | Validation du pane d'administration web | 0d | 2016-02-28 | 2016-02-28 | 28 |
| 31 | Validation de l'application Android | 0d | 2016-03-26 | 2016-03-26 | 30 |
| 33 | Validation de l'application IOS | 0d | 2016-05-02 | 2016-05-02 | 32 |
| 35 | Validation de l'application Windows Phone | 0d | 2016-05-28 | 2016-05-28 | 34 |
| 48 | Livraison du projet | 1d | 2016-07-09 | 2016-07-09 | 47 |
| 61 | Audit - Lancement projet | 0d | 2016-01-21 A | 2016-01-21 A |  |

Removed: 54 Demande de déploiement dans les stores

Changed:

| ID | Task | Start | Finish | Duration | Complete | Total float | Other |
| --- | --- | --- | --- | --- | --- | --- | --- |
| 2 | **Conception** |  |  |  | 43% → 64% | 33.5d → 0d |  |
| 3 | **Rédaction des spécifications générales** |  | 2015-11-14 A → 2015-11-14 |  | 100% → 99% | none → 0d | resources none → Antoine Trouvé |
| 14 | **Rédaction des spécifications détaillées** |  |  |  | 3% → 40% | 33.5d → 0d |  |
| 17 | Conception du diagramme de classe | 2015-11-15 A | 2015-11-21 A |  | 0% → 100% | 33.5d → none |  |
| 18 | Schéma détaillé de la base de données | 2015-11-21 A | 2015-11-25 A |  | 0% → 100% | 56.5d → none |  |
| 20 | Mise en place des règles de nommage | 2015-12-05 A | 2015-12-05 A |  | 0% → 100% | 41.5d → none |  |
| 23 | **Développement** | 2015-12-16 A |  |  | 0% → 19% | 33.5d → 11d |  |
| 24 | Mise en place de l'environnement de développement | 2015-12-16 A | 2015-12-20 A |  | 0% → 100% | 33.5d → none |  |
| 25 | Conception de la base de données | 2015-12-20 A |  |  | 0% → 75% | 33.5d → 15d |  |
| 27 | Développement du Web Service | 2015-12-27 A |  |  | 0% → 50% | 33.5d → 7.5d |  |
| 28 | Développement du Backend | 2016-01-26 A |  |  | 0% → 25% | 33.5d → 11d |  |
| 43 | **Déploiement** |  | 2016-07-08 → 2016-07-09 (+1d) | 11d → 12d |  | 33.5d → 11d |  |
| 49 | **Plan de Management Projet** | 2015-10-07 → 2015-11-22 A (+46d) |  | 306.5d → 263.5d | 0% → 91% |  |  |
| 50 | Plan de Management Projet 1 | 2015-11-22 A | 2015-11-22 A |  | 0% → 100% |  |  |
| 51 | Plan de Management Projet 2 | 2015-11-29 A | 2015-11-29 A |  | 0% → 100% |  |  |
| 52 | Plan de Management Projet 3 | 2015-12-06 A | 2015-12-06 A |  | 0% → 100% |  |  |
| 53 | Plan de Management Projet 4 | 2015-12-13 A | 2015-12-13 A |  | 0% → 100% |  |  |
| 54 | Plan de Management Projet 5 | 2015-12-20 A | 2015-12-20 A |  | 0% → 100% |  |  |
| 55 | Plan de Management Projet 6 | 2015-12-27 A | 2015-12-27 A |  | 0% → 100% |  |  |
| 56 | Plan de Management Projet 7 | 2016-01-03 A | 2016-01-03 A |  | 0% → 100% |  |  |
| 57 | Plan de Management Projet 8 | 2016-01-10 A | 2016-01-10 A |  | 0% → 100% |  |  |
| 58 | Plan de Management Projet 9 | 2016-01-17 A | 2016-01-17 A |  | 0% → 100% |  |  |
| 59 | Plan de Management Projet 10 | 2016-01-24 A | 2016-01-24 A |  | 0% → 100% |  |  |

## Version 4 (data date 2016-05-18, saved 2016-05-18)

Note of the change: update web documentation

Last finish stays 2016-08-07. Complete tasks 25 → 38.

Changed:

| ID | Task | Start | Finish | Complete | Total float |
| --- | --- | --- | --- | --- | --- |
| 2 | **Conception** |  |  | 64% → 99% |  |
| 13 | Validation du besoin client | 2015-11-15 A | 2015-11-15 A | 0% → 100% |  |
| 14 | **Rédaction des spécifications détaillées** |  | 2015-12-15 A | 40% → 100% | 0d → none |
| 15 | Rédaction et mise en forme du document | 2015-12-10 A | 2015-12-15 A | 0% → 100% | 0d → none |
| 16 | Analyse technique par fonction | 2015-11-21 A | 2015-11-30 A | 0% → 100% | 1.5d → none |
| 19 | Planification et rédaction des tests |  | 2015-12-05 A | 25% → 100% | 0d → none |
| 21 | Conception du diagramme de composants | 2015-12-05 A | 2015-12-09 A | 0% → 100% | 0d → none |
| 22 | Validation du cahier des charges spécifiques | 2015-12-02 A | 2015-12-02 A | 0% → 100% |  |
| 23 | **Développement** |  |  | 19% → 62% | 11d → 0d |
| 25 | Conception de la base de données |  | 2015-12-27 A | 75% → 100% | 15d → none |
| 26 | Validation du schema de base de données | 2015-12-28 A | 2015-12-28 A | 0% → 100% |  |
| 27 | Développement du Web Service |  |  | 50% → 75% | 7.5d → 120d |
| 28 | Développement du Backend |  | 2016-02-28 A | 25% → 100% | 11d → none |
| 29 | Validation du pane d'administration web | 2016-02-28 A | 2016-02-28 A | 0% → 100% |  |
| 30 | Développement Android | 2016-02-28 A |  | 0% → 50% | 11d → 7.5d |
| 32 | Développement IOS | 2016-03-26 A |  | 0% → 25% | 11d → 15d |
| 34 | Développement Windows Phone | 2016-05-02 A |  | 0% → 50% | 11d → 0d |
| 36 | **Test et validation** | 2016-05-28 A |  | 0% → 71% |  |
| 37 | Mise en place de l'environnement de test | 2016-05-28 A | 2016-06-02 A | 0% → 100% | 11d → none |
| 38 | Test des fonctions applicatives | 2016-06-03 A |  | 0% → 50% | 11d → 31d |
| 39 | Test du Backend | 2016-06-15 A | 2016-06-26 A | 0% → 100% | 11d → none |
| 40 | Test du Web service | 2016-06-27 A |  | 0% → 50% |  |
| 63 | Audit Projet - Programmation | 2016-05-12 A | 2016-05-12 A | 0% → 100% |  |
