# GP-ProjetQCM

How a schedule from MS Project changed from version to version. A marks actual dates.

## Version 1 (data date 2016-05-18, saved 2016-05-18)

Note of the change: update web documentation

| ID | WBS | Task | Duration | Start | Finish | Predecessors | Complete | Total float | Constraint |
| --- | --- | --- | --- | --- | --- | --- | --- | --- | --- |
| 1 |  | Expression des besoins et exigences comportementales | 2d | 2015-10-07 A | 2015-10-08 A |  | 100% |  |  |
| 2 | 2 | **Conception** | 68d | 2015-10-09 A | 2015-12-15 | 1 | 99% | 0d |  |
| 3 | 2.1 | **Rédaction des spécifications générales** | 30d | 2015-10-09 A | 2015-11-14 | 1 | 99% | 0d |  |
| 4 |  | Rédaction et mise en forme du document | 2d | 2015-11-13 A | 2015-11-14 A | 12 | 100% |  |  |
| 5 |  | Analyse du besoin fonctionnel | 5d | 2015-10-09 A | 2015-10-13 A | 1 | 100% |  |  |
| 6 |  | Conception des maquettes | 2d | 2015-10-14 A | 2015-10-17 A | 5 | 100% |  |  |
| 7 |  | Conception des UserCase | 3d | 2015-10-17 A | 2015-10-19 A | 6 | 100% |  |  |
| 8 |  | Liste et Analyse des fonctions | 5d | 2015-10-20 A | 2015-10-25 A | 7 | 100% |  |  |
| 9 |  | Planification prévisionnelle | 5d | 2015-11-05 A | 2015-11-10 A | 10, 11 | 100% |  |  |
| 10 |  | Mise en place Gantt / PERT | 5d | 2015-10-26 A | 2015-11-01 A | 8 | 100% |  |  |
| 11 |  | Liste des ressources | 2d | 2015-11-01 A | 2015-11-04 A | 10 | 100% |  |  |
| 12 |  | Coût prévisionnel | 1d | 2015-11-11 A | 2015-11-12 A | 9 | 100% |  |  |
| 13 |  | Validation du besoin client | 0d | 2015-11-15 A | 2015-11-15 A | 3 | 100% |  |  |
| 14 | 2.3 | **Rédaction des spécifications détaillées** | 38d | 2015-11-15 A | 2015-12-15 A | 3 | 100% |  |  |
| 15 |  | Rédaction et mise en forme du document | 5d | 2015-12-10 A | 2015-12-15 A | 21 | 100% |  |  |
| 16 |  | Analyse technique par fonction | 13d | 2015-11-21 A | 2015-11-30 A | 17 | 100% |  |  |
| 17 |  | Conception du diagramme de classe | 10d | 2015-11-15 A | 2015-11-21 A | 3 | 100% |  |  |
| 18 |  | Schéma détaillé de la base de données | 5d | 2015-11-21 A | 2015-11-25 A | 17 | 100% |  |  |
| 19 |  | Planification et rédaction des tests | 6d | 2015-11-30 A | 2015-12-05 A | 16 | 100% |  |  |
| 20 |  | Mise en place des règles de nommage | 1d | 2015-12-05 A | 2015-12-05 A | 19 | 100% |  |  |
| 21 |  | Conception du diagramme de composants | 4d | 2015-12-05 A | 2015-12-09 A | 19 | 100% |  |  |
| 22 |  | Validation du cahier des charges spécifiques | 0d | 2015-12-02 A | 2015-12-02 A |  | 100% |  |  |
| 23 | 3 | **Développement** | 158d | 2015-12-16 A | 2016-05-28 | 14 | 62% | 0d |  |
| 24 |  | Mise en place de l'environnement de développement | 4d | 2015-12-16 A | 2015-12-20 A | 15 | 100% |  |  |
| 25 |  | Conception de la base de données | 4d | 2015-12-20 A | 2015-12-27 A | 24 | 100% |  |  |
| 26 |  | Validation du schema de base de données | 0d | 2015-12-28 A | 2015-12-28 A |  | 100% |  |  |
| 27 |  | Développement du Web Service | 30d | 2015-12-27 A | 2016-01-26 | 25 | 75% | 120d |  |
| 28 |  | Développement du Backend | 30d | 2016-01-26 A | 2016-02-28 A | 27 | 100% |  |  |
| 29 |  | Validation du pane d'administration web | 0d | 2016-02-28 A | 2016-02-28 A | 28 | 100% |  |  |
| 30 |  | Développement Android | 30d | 2016-02-28 A | 2016-03-26 | 28 | 50% | 7.5d |  |
| 31 |  | Validation de l'application Android | 0d | 2016-03-26 | 2016-03-26 | 30 |  |  |  |
| 32 |  | Développement IOS | 30d | 2016-03-26 A | 2016-05-01 | 30 | 25% | 15d |  |
| 33 |  | Validation de l'application IOS | 0d | 2016-05-02 | 2016-05-02 | 32 |  |  |  |
| 34 |  | Développement Windows Phone | 30d | 2016-05-02 A | 2016-05-28 | 32 | 50% | 0d |  |
| 35 |  | Validation de l'application Windows Phone | 0d | 2016-05-28 | 2016-05-28 | 34 |  |  |  |
| 36 | 4 | **Test et validation** | 34d | 2016-05-28 A | 2016-07-01 | 23 | 71% | 11d |  |
| 37 |  | Mise en place de l'environnement de test | 4d | 2016-05-28 A | 2016-06-02 A | 34 | 100% |  |  |
| 38 |  | Test des fonctions applicatives | 10d | 2016-06-03 A | 2016-06-14 | 37 | 50% | 31d |  |
| 39 |  | Test du Backend | 10d | 2016-06-15 A | 2016-06-26 A | 38 | 100% |  |  |
| 40 |  | Test du Web service | 10d | 2016-06-27 A | 2016-07-01 | 39 | 50% | 11d |  |
| 41 |  | Validation des tests | 0d | 2016-07-02 | 2016-07-02 | 36 |  |  |  |
| 42 |  | Demande de déploiement dans les stores | 0d | 2016-07-02 | 2016-07-02 | 41 |  |  |  |
| 43 | 7 | **Déploiement** | 12d | 2016-07-02 | 2016-07-09 | 36 |  | 11d |  |
| 44 |  | Mise en place de l'environnement de production | 4d | 2016-07-02 | 2016-07-04 |  |  | 32.5d |  |
| 45 |  | Intégration des applications dans l'environnement de production | 3d | 2016-07-05 | 2016-07-07 | 44 |  | 32.5d |  |
| 46 |  | Déploiement de la solution finale | 3d | 2016-07-07 | 2016-07-07 | 45 |  | 32.5d |  |
| 47 |  | Mise à disposition de l'application dans les stores | 1d | 2016-07-08 | 2016-07-08 | 46 |  | 32.5d |  |
| 48 |  | Livraison du projet | 1d | 2016-07-09 | 2016-07-09 | 47 |  |  |  |
| 49 | 8 | **Plan de Management Projet** | 263.5d | 2015-11-22 A | 2016-08-07 |  | 91% | 0d |  |
| 50 |  | Plan de Management Projet 1 | 0.3d | 2015-11-22 A | 2015-11-22 A |  | 100% |  | start no earlier than 2015-11-22 |
| 51 |  | Plan de Management Projet 2 | 0.3d | 2015-11-29 A | 2015-11-29 A |  | 100% |  | start no earlier than 2015-11-29 |
| 52 |  | Plan de Management Projet 3 | 0.3d | 2015-12-06 A | 2015-12-06 A |  | 100% |  | start no earlier than 2015-12-06 |
| 53 |  | Plan de Management Projet 4 | 0.3d | 2015-12-13 A | 2015-12-13 A |  | 100% |  | start no earlier than 2015-12-13 |
| 54 |  | Plan de Management Projet 5 | 0.3d | 2015-12-20 A | 2015-12-20 A |  | 100% |  | start no earlier than 2015-12-20 |
| 55 |  | Plan de Management Projet 6 | 0.3d | 2015-12-27 A | 2015-12-27 A |  | 100% |  | start no earlier than 2015-12-27 |
| 56 |  | Plan de Management Projet 7 | 0.3d | 2016-01-03 A | 2016-01-03 A |  | 100% |  | start no earlier than 2016-01-03 |
| 57 |  | Plan de Management Projet 8 | 0.3d | 2016-01-10 A | 2016-01-10 A |  | 100% |  | start no earlier than 2016-01-10 |
| 58 |  | Plan de Management Projet 9 | 0.3d | 2016-01-17 A | 2016-01-17 A |  | 100% |  | start no earlier than 2016-01-17 |
| 59 |  | Plan de Management Projet 10 | 0.3d | 2016-01-24 A | 2016-01-24 A |  | 100% |  | start no earlier than 2016-01-24 |
| 60 |  | Plan de Management Projet 11 | 0.3d | 2016-01-31 | 2016-01-31 |  |  |  | start no earlier than 2016-01-31 |
| 61 |  | Audit - Lancement projet | 0d | 2016-01-21 A | 2016-01-21 A |  | 100% |  |  |
| 62 |  | Audit projet - Gestion de projet | 0d | 2016-01-28 | 2016-01-28 |  |  |  |  |
| 63 |  | Audit Projet - Programmation | 0d | 2016-05-12 A | 2016-05-12 A |  | 100% |  |  |
| 64 |  | Audit - Programmation | 0d | 2016-05-19 | 2016-05-19 |  |  |  |  |
| 65 |  | Livraison Projet | 0d | 2016-08-07 | 2016-08-07 |  |  |  |  |

## Version 2 (data date 2016-07-07, saved 2016-07-07)

Note of the change: Update documentation

Last finish stays 2016-08-07. Complete tasks 38 → 42.

Changed:

| ID | Task | Start | Finish | Complete | Total float |
| --- | --- | --- | --- | --- | --- |
| 23 | **Développement** |  |  | 62% → 74% |  |
| 27 | Développement du Web Service |  | 2016-01-26 A | 75% → 100% | 120d → none |
| 30 | Développement Android |  |  | 50% → 90% |  |
| 36 | **Test et validation** |  |  | 71% → 90% | 11d → 1.5d |
| 38 | Test des fonctions applicatives |  |  | 50% → 80% | 31d → 21.5d |
| 40 | Test du Web service |  |  | 50% → 85% | 11d → 1.5d |
| 43 | **Déploiement** | 2016-07-02 A |  | 0% → 13% | 11d → 31.5d |
| 46 | Déploiement de la solution finale | 2016-07-07 A |  | 0% → 50% |  |
| 49 | **Plan de Management Projet** |  |  | 91% → 99% |  |
| 60 | Plan de Management Projet 11 | 2016-01-31 A | 2016-01-31 A | 0% → 100% |  |
| 62 | Audit projet - Gestion de projet | 2016-01-28 A | 2016-01-28 A | 0% → 100% |  |
| 64 | Audit - Programmation | 2016-05-19 A | 2016-05-19 A | 0% → 100% |  |
